# Cronograma

Schedule from MS Project, 2017-02-24 to 2017-06-27, status date 2017-04-17, costs in R$, A marks actual dates.

## Calendars

- Padrão: Mon-Fri 09:00-12:00, 13:00-18:00; Sat-Sun off. Exceptions (off unless hours are given): 2017-02-26 09:00-12:00, 13:00-18:00, 2017-03-12 09:00-12:00, 13:00-18:00, 2017-03-18 to 2017-03-19 09:00-12:00, 13:00-18:00, 2017-03-25 to 2017-03-26 09:00-12:00, 13:00-18:00, 2017-04-01 to 2017-04-02 09:00-12:00, 13:00-18:00, 2017-04-08 09:00-12:00 (Trabalho), 2017-04-09 09:00-12:00, 13:00-18:00, 2017-04-14 09:00-12:00, 13:00-18:00, 2017-04-16 09:00-12:00, 13:00-18:00, 2017-04-21 (Tiradentes), 2017-04-29 09:00-12:00, 13:00-18:00, 2017-05-01 09:00-12:00, 13:00-18:00, 2017-05-06 to 2017-05-07 09:00-12:00, 13:00-18:00, 2017-05-13 09:00-12:00, 13:00-18:00, 2017-05-27 09:00-12:00, 13:00-18:00, 2017-06-13 09:00-12:00, 13:00-18:00, 2017-06-15 (Corpus Christ), 2017-06-16 09:00-12:00, 13:00-18:00.

## Resources

| Resource | Rate |
| --- | --- |
| Aléx dos Santos | 9 |
| Paulo Ronchini | 9 |
| Emanuel Martins | 9 |
| Leandro | 9 |
| Thiago | 9 |
| Cliente |  |
| Professor |  |

## Schedule

| ID | WBS | Task | Duration | Start | Finish | Predecessors | Complete | Remaining | Baseline start | Baseline finish | Baseline duration | Total slack | Constraint | Resources | Work | Actual work | Cost | Baseline cost | Actual cost |
| --- | --- | --- | --- | --- | --- | --- | --- | --- | --- | --- | --- | --- | --- | --- | --- | --- | --- | --- | --- |
| 1 | 1 | **01 - Sistema de cadastro de clientes e alunos** | 101.38d | 2017-02-24 A | 2017-06-27 |  | 37% | 64.31d | 2017-02-24 | 2017-06-16 | 92.38d | 0d |  |  | 1336h | 436h | 11,484 | 12,204 | 3,816 |
| 2 | 1.1 | **Entrega 01 - Planejamento** | 19d | 2017-02-27 A | 2017-03-20 A |  | 100% |  | 2017-02-24 | 2017-03-15 | 15d |  |  |  | 84h | 84h | 756 | 612 | 756 |
| 3 | 1.1.1 | **Cronograma** | 1d | 2017-03-20 A | 2017-03-20 A |  | 100% |  | 2017-02-24 | 2017-02-24 | 1d |  |  |  | 8h | 8h | 72 | 72 | 72 |
| 4 | 1.1.1.1 | Definir tarefas | 1d | 2017-03-20 A | 2017-03-20 A |  | 100% |  | 2017-02-24 | 2017-02-24 | 1d |  | start no earlier than 2017-03-20 | Aléx dos Santos | 8h | 8h | 72 | 72 | 72 |
| 5 | 1.1.1.2 | Definir horários | 1d | 2017-03-20 A | 2017-03-20 A | 4SS | 100% |  | 2017-02-24 | 2017-02-24 | 1d |  | start no earlier than 2017-03-20 |  |  |  |  |  |  |
| 6 | 1.1.2 | **Termo de abertura do projeto** | 13d | 2017-02-27 A | 2017-03-14 A |  | 100% |  | 2017-02-27 | 2017-03-14 | 13d |  |  |  | 52h | 52h | 468 | 468 | 468 |
| 7 | 1.1.2.1 | Identificar cliente | 2h | 2017-02-27 A | 2017-02-27 A | 5, 4 | 100% |  | 2017-02-27 | 2017-02-27 | 2h |  |  | Emanuel Martins [50%]; Paulo Ronchini [50%] | 2h | 2h | 18 | 18 | 18 |
| 8 | 1.1.2.2 | Identificar sistema | 2h | 2017-02-27 A | 2017-02-27 A | 7SS | 100% |  | 2017-02-27 | 2017-02-27 | 2h |  |  | Aléx dos Santos; Emanuel Martins [50%]; Leandro; Paulo Ronchini [50%]; Thiago | 10h | 10h | 90 | 90 | 90 |
| 9 | 1.1.2.3 | Elaborar versão preliminar do TAP | 1d | 2017-02-28 A | 2017-02-28 A | 8, 7 | 100% |  | 2017-02-28 | 2017-02-28 | 1d |  |  | Aléx dos Santos; Paulo Ronchini | 16h | 16h | 144 | 144 | 144 |
| 10 | 1.1.2.4 | Validar TAP com a cliente | 1d | 2017-03-13 A | 2017-03-13 A | 9 | 100% |  | 2017-03-13 | 2017-03-13 | 1d |  | start no earlier than 2017-03-13 | Emanuel Martins | 8h | 8h | 72 | 72 | 72 |
| 11 | 1.1.2.5 | Ajustar TAP | 1d | 2017-03-14 A | 2017-03-14 A | 10 | 100% |  | 2017-03-14 | 2017-03-14 | 1d |  | start no earlier than 2017-03-14 | Aléx dos Santos; Paulo Ronchini | 16h | 16h | 144 | 144 | 144 |
| 12 | 1.1.3 | **Manual do projeto** | 1d | 2017-03-15 A | 2017-03-15 A | 11 | 100% |  | 2017-03-15 | 2017-03-15 | 1d |  |  |  | 24h | 24h | 216 | 72 | 216 |
| 13 | 1.1.3.1 | Elaborar Manual do Projeto | 1d | 2017-03-15 A | 2017-03-15 A |  | 100% |  | 2017-03-15 | 2017-03-15 | 1d |  | start no earlier than 2017-03-13 | Leandro; Emanuel Martins; Thiago | 24h | 24h | 216 | 72 | 216 |
| 14 | 1.2 | **Entrega 02 - Requisitos** | 5d | 2017-03-16 A | 2017-03-20 A |  | 100% |  | 2017-03-16 | 2017-03-22 | 7d |  |  |  | 80h | 80h | 720 | 1,512 | 720 |
| 15 | 1.2.1 | **Casos de uso** | 1d | 2017-03-16 A | 2017-03-16 A |  | 100% |  | 2017-03-16 | 2017-03-17 | 2d |  |  |  | 24h | 24h | 216 | 216 | 216 |
| 16 | 1.2.1.1 | Elaborar Caso de uso | 1d | 2017-03-16 A | 2017-03-16 A | 13 | 100% |  | 2017-03-16 | 2017-03-16 | 1d |  | start no earlier than 2017-03-06 | Paulo Ronchini; Thiago | 16h | 16h | 144 | 144 | 144 |
| 17 | 1.2.1.2 | Validar Caso de uso com a Cliente | 1d | 2017-03-16 A | 2017-03-16 A | 16FS-1d | 100% |  | 2017-03-17 | 2017-03-17 | 1d |  |  | Emanuel Martins | 8h | 8h | 72 | 72 | 72 |
| 18 | 1.2.2 | **Casos de uso extendido** | 2d | 2017-03-19 A | 2017-03-20 A |  | 100% |  | 2017-03-18 | 2017-03-19 | 2d |  |  |  | 32h | 32h | 288 | 504 | 288 |
| 19 | 1.2.2.1 | Elaborar Caso de uso extendido | 1d | 2017-03-19 A | 2017-03-19 A | 17 | 100% |  | 2017-03-18 | 2017-03-19 | 2d |  | start no earlier than 2017-03-16 | Leandro; Paulo Ronchini; Thiago | 24h | 24h | 216 | 432 | 216 |
| 20 | 1.2.2.2 | Validar Caso de uso Caso extendido | 1d | 2017-03-20 A | 2017-03-20 A | 19FS-1d | 100% |  | 2017-03-19 | 2017-03-19 | 1d |  |  | Emanuel Martins | 8h | 8h | 72 | 72 | 72 |
| 21 | 1.2.3 | **Manual do projeto** | 1d | 2017-03-20 A | 2017-03-20 A |  | 100% |  | 2017-03-20 | 2017-03-20 | 1d |  |  |  | 16h | 16h | 144 | 72 | 144 |
| 22 | 1.2.3.1 | Atualizar Manual do Projeto | 1d | 2017-03-20 A | 2017-03-20 A | 20 | 100% |  | 2017-03-20 | 2017-03-20 | 1d |  |  | Leandro; Paulo Ronchini | 16h | 16h | 144 | 72 | 144 |
| 23 | 1.2.4 | **Plano de teste de aceitação** | 1d | 2017-03-20 A | 2017-03-20 A |  | 100% |  | 2017-03-21 | 2017-03-22 | 2d |  |  |  | 8h | 8h | 72 | 720 | 72 |
| 24 | 1.2.4.1 | Elaboração do Plano de Testes | 1d | 2017-03-20 A | 2017-03-20 A | 22SS | 100% |  | 2017-03-21 | 2017-03-22 | 2d |  | finish no earlier than 2017-03-20 | Aléx dos Santos | 8h | 8h | 72 | 720 | 72 |

| ID | WBS | Task | Duration | Start | Finish | Predecessors | Complete | Baseline start | Baseline finish | Baseline duration | Constraint | Resources | Work | Actual work | Cost | Baseline cost | Actual cost |
| --- | --- | --- | --- | --- | --- | --- | --- | --- | --- | --- | --- | --- | --- | --- | --- | --- | --- |
| 25 | 1.3 | **Entrega 03 - Banco de dados** | 28d | 2017-02-24 A | 2017-03-27 A |  | 100% | 2017-03-23 | 2017-03-27 | 5d |  |  | 120h | 120h | 1,080 | 1,044 | 1,080 |
| 26 | 1.3.1 | **Modelagem de dados** | 26d | 2017-02-24 A | 2017-03-25 A |  | 100% | 2017-03-23 | 2017-03-24 | 2d |  |  | 80h | 80h | 720 | 432 | 720 |
| 27 | 1.3.1.1 | Elaborar Modelagem do MER | 3d | 2017-03-22 A | 2017-03-24 A | 24 | 100% | 2017-03-23 | 2017-03-23 | 1d | start no earlier than 2017-03-22 | Paulo Ronchini; Aléx dos Santos | 40h | 40h | 360 | 144 | 360 |
| 28 | 1.3.1.2 | Elaborar Modelagem do DER | 1d | 2017-02-24 A | 2017-02-24 A |  | 100% |  |  |  |  | Aléx dos Santos; Paulo Ronchini | 16h | 16h | 144 |  | 144 |
| 29 | 1.3.1.3 | Validar o MER e DER com a cliente | 1d | 2017-03-25 A | 2017-03-25 A | 27 | 100% | 2017-03-24 | 2017-03-24 | 1d | finish no earlier than 2017-03-25 | Emanuel Martins | 8h | 8h | 72 | 288 | 72 |
| 30 | 1.3.1.4 | Realizar Codificação do Modelo Fisico | 1d | 2017-02-26 A | 2017-02-26 A | 28 | 100% |  |  |  | start no earlier than 2017-02-26 | Thiago; Leandro | 16h | 16h | 144 |  | 144 |
| 31 | 1.3.2 | **Diagrama de classe** | 2d | 2017-03-26 A | 2017-03-27 A |  | 100% | 2017-03-25 | 2017-03-26 | 2d |  |  | 32h | 32h | 288 | 468 | 288 |
| 32 | 1.3.2.1 | Elaborar Diagrama de Classes | 1d | 2017-03-26 A | 2017-03-26 A | 29SS | 100% | 2017-03-25 | 2017-03-25 | 1d | start no earlier than 2017-03-26 | Aléx dos Santos; Paulo Ronchini | 16h | 16h | 144 | 144 | 144 |
| 33 | 1.3.2.2 | Validar Diagrama de Classe junto a equipe | 1d | 2017-03-27 A | 2017-03-27 A | 32SS, 29 | 100% | 2017-03-26 | 2017-03-26 | 1d | start no earlier than 2017-03-27 | Aléx dos Santos; Paulo Ronchini | 16h | 16h | 144 | 324 | 144 |
| 34 | 1.3.3 | **Manual do projeto** | 1d | 2017-03-27 A | 2017-03-27 A |  | 100% | 2017-03-27 | 2017-03-27 | 1d |  |  | 8h | 8h | 72 | 144 | 72 |
| 35 | 1.3.3.1 | Atualizar Manual do Projeto | 1d | 2017-03-27 A | 2017-03-27 A | 33SS | 100% | 2017-03-27 | 2017-03-27 | 1d | start no earlier than 2017-03-26 | Emanuel Martins | 8h | 8h | 72 | 144 | 72 |
| 36 | 1.4 | **Entrega 04 - Projeto funcional** | 7d | 2017-03-28 A | 2017-04-03 A |  | 100% | 2017-03-28 | 2017-04-03 | 7d |  |  | 96h | 96h | 864 | 1,224 | 864 |
| 37 | 1.4.1 | **Diagrama de Sequência** | 7d | 2017-03-28 A | 2017-04-03 A |  | 100% | 2017-03-28 | 2017-03-31 | 4d |  |  | 72h | 72h | 648 | 648 | 648 |
| 38 | 1.4.1.1 | Elaborar Diagrama de Sequência | 1d | 2017-03-28 A | 2017-03-28 A | 35 | 100% | 2017-03-28 | 2017-03-28 | 1d |  | Leandro; Paulo Ronchini; Thiago | 24h | 24h | 216 | 216 | 216 |
| 39 | 1.4.1.2 | Validar Diagrama de Sequência junto a equipe | 1d | 2017-03-29 A | 2017-03-29 A | 38 | 100% | 2017-03-29 | 2017-03-29 | 1d | start no earlier than 2017-03-29 | Aléx dos Santos; Emanuel Martins; Leandro; Paulo Ronchini; Thiago | 40h | 40h | 360 | 360 | 360 |
| 40 | 1.4.1.3 | Elaborar Diagrama de Máquina de Estado | 1d | 2017-04-02 A | 2017-04-02 A | 39 | 100% | 2017-03-30 | 2017-03-30 | 1d | start no earlier than 2017-04-02 | Thiago | 8h | 8h | 72 | 72 | 72 |
| 41 | 1.4.1.4 | Validar diagrama de máquina de estados com a equipe | 1d | 2017-04-03 A | 2017-04-03 A | 40 | 100% | 2017-03-31 | 2017-03-31 | 1d |  |  |  |  |  |  |  |
| 42 | 1.4.2 | **Manual do projeto** | 1d | 2017-04-03 A | 2017-04-03 A |  | 100% | 2017-04-01 | 2017-04-01 | 1d |  |  | 8h | 8h | 72 | 72 | 72 |
| 43 | 1.4.2.1 | Atualizar Manual do Projeto | 1d | 2017-04-03 A | 2017-04-03 A | 41SS | 100% | 2017-04-01 | 2017-04-01 | 1d | start no earlier than 2017-04-01 | Aléx dos Santos | 8h | 8h | 72 | 72 | 72 |
| 44 | 1.4.3 | **Plano de Teste(unitário e integração)** | 1d | 2017-04-03 A | 2017-04-03 A |  | 100% | 2017-04-02 | 2017-04-03 | 2d |  |  | 16h | 16h | 144 | 504 | 144 |
| 45 | 1.4.3.1 | Elaboração do Plano de Testes | 1d | 2017-04-03 A | 2017-04-03 A | 43SS | 100% | 2017-04-02 | 2017-04-02 | 1d |  | Thiago | 8h | 8h | 72 | 144 | 72 |
| 46 | 1.4.3.2 | Realização do Plano de Teste | 1d | 2017-04-03 A | 2017-04-03 A | 45SS | 100% | 2017-04-03 | 2017-04-03 | 1d |  | Emanuel Martins | 8h | 8h | 72 | 360 | 72 |
| 47 | 1.5 | **Entrega 05 - Interface** | 2.38d | 2017-04-08 A | 2017-04-10 A |  | 100% | 2017-04-04 | 2017-04-10 | 5.5d |  |  | 56h | 56h | 396 | 864 | 396 |
| 48 | 1.5.1 | **Manual do usuário** | 1d | 2017-04-10 A | 2017-04-10 A |  | 100% | 2017-04-04 | 2017-04-07 | 4d |  |  | 24h | 24h | 144 | 288 | 144 |
| 49 | 1.5.1.1 | Elaborar Manual do usuário | 1d | 2017-04-10 A | 2017-04-10 A |  | 100% | 2017-04-04 | 2017-04-05 | 2d | start no earlier than 2017-04-10 | Thiago | 8h | 8h | 72 | 144 | 72 |
| 50 | 1.5.1.2 | Validar manual do usuário | 1d | 2017-04-10 A | 2017-04-10 A | 49SS | 100% | 2017-04-06 | 2017-04-07 | 2d | start no earlier than 2017-04-10 | Cliente; Emanuel Martins | 16h | 16h | 72 | 144 | 72 |

| ID | WBS | Task | Duration | Start | Finish | Predecessors | Complete | Baseline start | Baseline finish | Baseline duration | Total slack | Free slack | Constraint | Resources | Work | Actual work | Cost | Baseline cost | Actual cost |
| --- | --- | --- | --- | --- | --- | --- | --- | --- | --- | --- | --- | --- | --- | --- | --- | --- | --- | --- | --- |
| 51 | 1.5.2 | **Protótipo** | 2.38d | 2017-04-08 A | 2017-04-10 A |  | 100% | 2017-04-06 | 2017-04-10 | 3.5d |  |  |  |  | 32h | 32h | 252 | 576 | 252 |
| 52 | 1.5.2.1 | Elaborar Protótipo | 1d | 2017-04-08 A | 2017-04-09 A |  | 100% | 2017-04-06 | 2017-04-07 | 2d |  |  | start no earlier than 2017-04-08 | Aléx dos Santos; Paulo Ronchini | 16h | 16h | 144 | 432 | 144 |
| 53 | 1.5.2.2 | Testar Protótipo junto a cliente | 4h | 2017-04-10 A | 2017-04-10 A | 52SS | 100% | 2017-04-08 | 2017-04-09 | 4h |  |  | start no earlier than 2017-04-10 | Cliente; Emanuel Martins | 8h | 8h | 36 | 36 | 36 |
| 54 | 1.5.2.3 | Atualizar Manual do Projeto | 1d | 2017-04-10 A | 2017-04-10 A | 53SS | 100% | 2017-04-09 | 2017-04-10 | 1d |  |  | start no earlier than 2017-04-10 | Leandro | 8h | 8h | 72 | 72 | 72 |
| 55 | 1.6 | **Primeira avaliação** | 0.12d | 2017-04-17 | 2017-04-17 |  |  | 2017-04-20 | 2017-04-20 | 0.12d | 30.88d |  |  |  |  |  |  |  |  |
| 56 | 1.6.1 | Apresentação | 1h | 2017-04-17 | 2017-04-17 | 54 |  | 2017-04-20 | 2017-04-20 | 1h | 21.88d | 0d | start no earlier than 2017-04-17 |  |  |  |  |  |  |
| 57 | 1.7 | **Entrega 06 - Codificação** | 18d | 2017-04-17 | 2017-05-08 |  |  | 2017-04-20 | 2017-05-10 | 15.12d | 29d |  |  |  | 508h |  | 4,428 | 2,412 |  |
| 58 | 1.7.1 | Código fonte | 9h | 2017-04-17 | 2017-04-18 | 56SS |  | 2017-04-20 | 2017-04-24 | 9h | 21.88d | 0d | start no earlier than 2017-04-11 | Aléx dos Santos; Leandro; Paulo Ronchini; Thiago | 36h |  | 324 | 324 |  |
| 59 | 1.7.2 | **Manual do projeto** | 1d | 2017-04-18 | 2017-04-19 |  |  | 2017-04-24 | 2017-04-25 | 1d | 30.88d |  |  |  | 16h |  | 144 | 72 |  |
| 60 | 1.7.2.1 | Atualizar Manual do Projeto | 1d | 2017-04-18 | 2017-04-19 | 58 |  | 2017-04-24 | 2017-04-25 | 1d | 21.88d | 0d |  | Aléx dos Santos; Paulo Ronchini | 16h |  | 144 | 72 |  |
| 61 | 1.7.3 | **Teste unitário** | 16.88d | 2017-04-18 | 2017-05-08 |  |  | 2017-04-25 | 2017-05-10 | 13d | 29d |  |  |  | 456h |  | 3,960 | 2,016 |  |
| 62 | 1.7.3.1 | Elaborar de Teste unitário | 5d | 2017-04-18 | 2017-04-26 | 60SS |  | 2017-04-25 | 2017-05-01 | 5d | 21.88d | 0.88d | finish no earlier than 2017-04-18 | Thiago | 40h |  | 360 | 1,080 |  |
| 63 | 1.7.3.2 | Codificar Sistema Salão | 10d | 2017-04-27 | 2017-05-07 | 62 |  |  |  |  | 21d | 0d | start no earlier than 2017-04-27 | Aléx dos Santos; Paulo Ronchini | 160h |  | 1,440 |  |  |
| 64 | 1.7.3.3 | Codificar Sistema Escola | 10d | 2017-04-27 | 2017-05-07 | 63SS |  |  |  |  | 21d | 9d | start no earlier than 2017-04-27 | Emanuel Martins; Leandro; Thiago | 240h |  | 2,160 |  |  |
| 65 | 1.7.3.4 | Reformular manual do projeto | 2d | 2017-05-07 | 2017-05-08 | 64SS |  | 2017-05-06 | 2017-05-10 | 3d | 12d | 0d | start no earlier than 2017-05-07 | Cliente | 16h |  |  | 216 |  |
| 66 | 1.8 | **Entrega 07 - Versão Alfa** | 6d | 2017-05-09 | 2017-05-15 |  |  | 2017-05-10 | 2017-05-24 | 11d | 18d |  |  |  | 56h |  | 504 | 1,728 |  |
| 67 | 1.8.1 | **Testes alfa** | 6d | 2017-05-09 | 2017-05-15 |  |  | 2017-05-10 | 2017-05-18 | 7d | 18d |  |  |  | 32h |  | 288 | 1,440 |  |
| 68 | 1.8.1.1 | Elaborarar Teste Alfa | 2d | 2017-05-09 | 2017-05-10 | 65 |  | 2017-05-10 | 2017-05-16 | 5d | 12d | 3d |  | Aléx dos Santos; Emanuel Martins | 32h |  | 288 | 720 |  |
| 69 | 1.8.1.2 | Realizar Teste Alfa | 1d | 2017-05-15 | 2017-05-15 | 68 |  | 2017-05-16 | 2017-05-18 | 2d | 9d | 0d | start no earlier than 2017-05-15 |  |  |  |  | 720 |  |
| 70 | 1.8.2 | **Código fonte** | 1d | 2017-05-15 | 2017-05-15 |  |  | 2017-05-18 | 2017-05-22 | 2d | 18d |  |  |  | 8h |  | 72 | 144 |  |
| 71 | 1.8.2.1 | Entregar Código Fonte | 1d | 2017-05-15 | 2017-05-15 | 69SS |  | 2017-05-18 | 2017-05-22 | 2d | 11d | 0d | start no earlier than 2017-05-10 | Paulo Ronchini | 8h |  | 72 | 144 |  |
| 72 | 1.8.3 | **Manual do projeto** | 1d | 2017-05-15 | 2017-05-15 |  |  | 2017-05-22 | 2017-05-24 | 2d | 18d |  |  |  | 16h |  | 144 | 144 |  |
| 73 | 1.8.3.1 | Atualizar Plano de Testes | 1d | 2017-05-15 | 2017-05-15 | 71SS |  |  |  |  | 11d | 0d | start no earlier than 2017-02-15 | Emanuel Martins | 8h |  | 72 |  |  |
| 74 | 1.8.3.2 | Atualizar Manual do Projeto | 1d | 2017-05-15 | 2017-05-15 | 73SS |  | 2017-05-22 | 2017-05-24 | 2d | 11d | 0d |  | Aléx dos Santos | 8h |  | 72 | 144 |  |

| ID | WBS | Task | Duration | Start | Finish | Predecessors | Baseline start | Baseline finish | Baseline duration | Total slack | Free slack | Constraint | Resources | Work | Cost | Baseline cost |
| --- | --- | --- | --- | --- | --- | --- | --- | --- | --- | --- | --- | --- | --- | --- | --- | --- |
| 75 | 1.9 | **Entrega 08 - Versão Beta** | 81.38d | 2017-02-24 | 2017-05-29 |  | 2017-05-24 | 2017-05-31 | 6d | 20d |  |  |  | 184h | 1,512 | 864 |
| 76 | 1.9.1 | **Testes beta** | 81.38d | 2017-02-24 | 2017-05-29 |  | 2017-05-24 | 2017-05-29 | 4d | 20d |  |  |  | 168h | 1,368 | 720 |
| 77 | 1.9.1.1 | Elaborar Teste Beta | 2d | 2017-05-16 | 2017-05-17 | 74 | 2017-05-24 | 2017-05-26 | 2d | 9d | 2d |  | Aléx dos Santos; Paulo Ronchini; Thiago | 48h | 432 | 432 |
| 78 | 1.9.1.2 | Verificar Codigo Salão | 1d | 2017-05-22 | 2017-05-22 | 77 |  |  |  | 7d | 0d | start no earlier than 2017-05-22 | Aléx dos Santos; Paulo Ronchini | 16h | 144 |  |
| 79 | 1.9.1.3 | Verificar Código Escola | 1d | 2017-05-23 | 2017-05-23 | 78 |  |  |  | 7d | 0d | start no earlier than 2017-05-22 | Emanuel Martins; Leandro; Thiago | 24h | 216 |  |
| 80 | 1.9.1.4 | Testar Sistema Salão | 1d | 2017-05-24 | 2017-05-24 | 79 |  |  |  | 7d | 0d |  | Aléx dos Santos; Paulo Ronchini | 16h | 144 |  |
| 81 | 1.9.1.5 | Testar Sistema Escola | 2d | 2017-05-24 | 2017-05-25 | 80SS |  |  |  | 7d | 2d | start no earlier than 2017-05-24 | Emanuel Martins; Leandro; Thiago | 48h | 432 |  |
| 82 | 1.9.1.6 | Testar Sistema Cliente | 1d | 2017-02-24 | 2017-02-24 |  |  |  |  | 93.38d |  |  | Cliente | 8h |  |  |
| 83 | 1.9.1.7 | Professor Realiza Teste Alfa | 1d | 2017-05-29 | 2017-05-29 | 81 | 2017-05-26 | 2017-05-29 | 2d | 5d | 0d | start no earlier than 2017-05-29 | Professor | 8h |  | 288 |
| 84 | 1.9.2 | **Código fonte** | 1d | 2017-05-29 | 2017-05-29 |  | 2017-05-29 | 2017-05-30 | 1d | 14d |  |  |  | 8h | 72 | 72 |
| 85 | 1.9.2.1 | Emtregar Código Fonte | 1d | 2017-05-29 | 2017-05-29 | 83SS | 2017-05-29 | 2017-05-30 | 1d | 5d | 0d |  | Paulo Ronchini | 8h | 72 | 72 |
| 86 | 1.9.3 | **Manual do projeto** | 1d | 2017-05-29 | 2017-05-29 |  | 2017-05-30 | 2017-05-31 | 1d | 14d |  |  |  | 8h | 72 | 72 |
| 87 | 1.9.3.1 | Atualizar Manual do Projeto | 1d | 2017-05-29 | 2017-05-29 | 85SS | 2017-05-30 | 2017-05-31 | 1d | 5d | 0d |  | Aléx dos Santos | 8h | 72 | 72 |
| 88 | 1.10 | **Entrega 09 - Testes de aceitação** | 12d | 2017-05-30 | 2017-06-14 |  | 2017-05-31 | 2017-06-08 | 6d | 5d |  |  |  | 40h | 360 | 720 |
| 89 | 1.10.1 | **Testes de aceitação** | 12d | 2017-05-30 | 2017-06-14 |  | 2017-05-31 | 2017-06-07 | 5d | 5d |  |  |  | 32h | 288 | 648 |
| 90 | 1.10.1.1 | Elaborar Teste de Aceitação | 2d | 2017-05-30 | 2017-05-31 | 87 | 2017-05-31 | 2017-06-02 | 2d | 9d | 7d | finish no earlier than 2017-05-12 | Aléx dos Santos | 16h | 144 | 144 |
| 91 | 1.10.1.2 | Elaborar Termo de aceitação | 1d | 2017-06-12 | 2017-06-12 | 90 | 2017-06-02 | 2017-06-06 | 2d | 2d |  | start no earlier than 2017-06-12 | Emanuel Martins | 8h | 72 | 432 |
| 92 | 1.10.1.3 | Realizar Teste de Aceitação | 1d | 2017-06-14 | 2017-06-14 | 91SS |  |  |  | 2d | 0d | start no earlier than 2017-06-14 | Emanuel Martins | 8h | 72 |  |
| 93 | 1.10.2 | **Manual do projeto** | 1d | 2017-06-14 | 2017-06-14 |  | 2017-06-07 | 2017-06-08 | 1d | 5d |  |  |  | 8h | 72 | 72 |
| 94 | 1.10.2.1 | Atualizar Manual do Projeto | 1d | 2017-06-14 | 2017-06-14 | 92SS | 2017-06-07 | 2017-06-08 | 1d | 1d | 0d | start no earlier than 2017-06-14 | Aléx dos Santos | 8h | 72 | 72 |
| 95 | 1.11 | **Entrega 10 - Documentação** | 1d | 2017-06-14 | 2017-06-14 |  | 2017-06-08 | 2017-06-09 | 1d | 5d |  |  |  | 8h | 72 | 72 |
| 96 | 1.11.1 | **Manual do projeto** | 1d | 2017-06-14 | 2017-06-14 |  | 2017-06-08 | 2017-06-09 | 1d | 5d |  |  |  | 8h | 72 | 72 |
| 97 | 1.11.1.1 | Atualizar Manual do Projeto | 1d | 2017-06-14 | 2017-06-14 | 94SS | 2017-06-08 | 2017-06-09 | 1d | 5d | 1d | finish no earlier than 2017-06-12 | Paulo Ronchini | 8h | 72 | 72 |
| 98 | 1.12 | **Prova 2** | 1d | 2017-06-19 | 2017-06-19 |  | 2017-06-09 | 2017-06-12 | 1d | 4d |  |  |  |  |  | 360 |
| 99 | 1.12.1 | Apresentação | 1d | 2017-06-19 | 2017-06-19 | 97 | 2017-06-09 | 2017-06-12 | 1d | 4d | 0d | start no earlier than 2017-06-19 |  |  |  | 360 |

| ID | WBS | Task | Duration | Start | Finish | Predecessors | Baseline start | Baseline finish | Baseline duration | Total slack | Constraint | Resources | Work | Cost | Baseline cost |
| --- | --- | --- | --- | --- | --- | --- | --- | --- | --- | --- | --- | --- | --- | --- | --- |
| 100 | 1.13 | **Entrega 11 - Evolução** | 6d | 2017-06-20 | 2017-06-27 |  | 2017-06-13 | 2017-06-16 | 3d | 0d |  |  | 104h | 792 | 792 |
| 101 | 1.13.1 | **Manual do projeto** | 5d | 2017-06-20 | 2017-06-26 |  | 2017-06-13 | 2017-06-14 | 2d | 1d |  |  | 56h | 432 | 432 |
| 102 | 1.13.1.1 | Finalizar Manual do Projeto | 2d | 2017-06-20 | 2017-06-21 | 99 | 2017-06-13 | 2017-06-14 | 2d | 4d | start no earlier than 2017-06-19 | Aléx dos Santos | 16h | 144 | 144 |
| 103 | 1.13.1.2 | Validar Manual junto ao professor | 1d | 2017-06-26 | 2017-06-26 | 102SF | 2017-06-14 | 2017-06-14 | 1d | 0d | start no earlier than 2017-06-26 | Emanuel Martins; Leandro; Paulo Ronchini; Professor; Thiago | 40h | 288 | 288 |
| 104 | 1.13.2 | **Software** | 1d | 2017-06-27 | 2017-06-27 |  | 2017-06-16 | 2017-06-16 | 1d | 0d |  |  | 48h | 360 | 360 |
| 105 | 1.13.2.1 | Realizar a entrega do Software já pronto | 1d | 2017-06-27 | 2017-06-27 | 103 | 2017-06-16 | 2017-06-16 | 1d | 0d | finish no earlier than 2017-06-16 | Aléx dos Santos; Emanuel Martins; Leandro; Paulo Ronchini; Professor; Thiago | 48h | 360 | 360 |
